Schedule from MS Project, 2024-05-13 to 2024-10-03, status date 2024-05-13.
Microsoft

## Calendars

- Стандартный: Mon-Fri 09:00-13:00, 14:00-18:00; Sat-Sun off.

## Schedule

| ID | WBS | Task | Type | Duration | Start | Finish |
| --- | --- | --- | --- | --- | --- | --- |
| 1 | 1 | **Этап 0. Подготовка проекта** |  | 30d | 2024-05-13 | 2024-06-21 |
| 2 | 1.1 | Анализ предметной области | manual | 1d? | 2024-05-13 | 2024-05-13 |
| 3 | 1.2 | Анализ предметной области | manual | 1d | 2024-05-13 | 2024-05-13 |
| 4 | 2 | **Этап 1. Сбор требований** |  | 15d | 2024-05-13 | 2024-05-31 |
| 5 | 2.1 | <Новая задача> | manual | 1d | 2024-05-13 | 2024-05-13 |
| 6 | 3 | **Этап 2. Архитектура и дизайн** |  | 45d | 2024-05-13 | 2024-07-12 |
| 7 | 3.1 | <Новая задача> | manual | 1d | 2024-05-13 | 2024-05-13 |
| 8 | 4 | **Этап 3. Разработка** |  | 90d? | 2024-05-13 | 2024-09-13 |
| 9 | 4.1 | цуац | manual | 1d? | 2024-05-13 | 2024-05-13 |
| 10 | 5 | **Этап 4. Тестирование** |  | 20d | 2024-05-13 | 2024-06-07 |
| 11 | 5.1 | <Новая задача> | manual | 1d | 2024-05-13 | 2024-05-13 |
| 12 | 6 | **Этап 5. Внедрение** |  | 15d | 2024-05-13 | 2024-05-31 |
| 13 | 6.1 | <Новая задача> | manual | 1d | 2024-05-13 | 2024-05-13 |
| 14 | 7 | **Этап 6. Поддержка** |  | 90d | 2024-05-31 | 2024-10-03 |
| 15 | 7.1 | <Новая задача> | manual | 1d | 2024-05-31 | 2024-05-31 |
